# caintegrator_project_plan

Schedule from MS Project, 2011-08-01 to 2012-06-25, A marks actual dates.
NIH\NCI

## Calendars

- Standard: Mon-Fri 08:00-12:00, 13:00-17:00; Sat-Sun off. Exceptions (off unless hours are given): 2011-09-05.

## Resources

| Resource |
| --- |
| JP |
| TBH |
| SJ/JP |
| Qut |
| Quy |
| SJ |

## Schedule

| ID | WBS | Task | Type | Duration | Start | Finish | Predecessors | Complete | Remaining | Total slack | Free slack | Constraint | Resources | Work | Actual work |
| --- | --- | --- | --- | --- | --- | --- | --- | --- | --- | --- | --- | --- | --- | --- | --- |
| 1 | 1 | **Adhoc Generic Support** |  | 16d | 2011-08-01 | 2011-08-22 |  |  |  | 218.75d |  |  |  |  |  |
| 2 | 1.1 | TCGA Data Support |  | 2d | 2011-08-01 | 2011-08-02 |  |  |  | 232.75d |  |  |  |  |  |
| 3 | 1.2 | TCGA Data on caIntegrator |  | 4d | 2011-08-17 | 2011-08-22 |  |  |  | 218.75d |  | start no earlier than 2011-08-17 |  |  |  |
| 4 | 1.3 | MATKC Support | milestone | 0d | 2011-08-01 | 2011-08-01 |  |  |  | 234.75d |  |  |  |  |  |
| 5 | 2 | **CaIntegrator Version 1.3.1** |  | 25d? | 2011-08-15 A | 2011-09-19 |  | 96% | 1.04d? | 0d |  |  |  | 56h | 56h |
| 6 | 2.1 | **508 Compliance** |  | 13d | 2011-08-15 A | 2011-08-31 A |  | 100% |  |  |  |  |  | 56h | 56h |
| 7 | 2.1.1 | Common Accenture Profile Dev/QA |  | 1d | 2011-08-15 A | 2011-08-15 A |  | 100% |  |  |  | start no earlier than 2011-08-15 | Quy | 8h | 8h |
| 8 | 2.1.2 | Identify 508 issues to be fixed and create JIRA user story tasks for each on DEV and QA. |  | 3d | 2011-08-22 A | 2011-08-24 A | 7 | 100% |  |  |  |  | JP | 24h | 24h |
| 9 | 2.1.3 | Fix TABLE tag in caBIO search form. |  | 0.5d | 2011-08-29 A | 2011-08-29 A | 8 | 100% |  |  |  |  | JP | 4h | 4h |
| 10 | 2.1.4 | Fix TABLE tag in gene list search form. |  | 0.5d | 2011-08-29 A | 2011-08-29 A | 9 | 100% |  |  |  |  | JP | 4h | 4h |
| 11 | 2.1.5 | Fix ALT tags in caBIO search form |  | 0.5d | 2011-08-30 A | 2011-08-30 A | 10 | 100% |  |  |  |  | JP | 4h | 4h |
| 12 | 2.1.6 | Fix ALT tags in study summary page |  | 0.5d | 2011-08-30 A | 2011-08-30 A | 11 | 100% |  |  |  |  | JP | 4h | 4h |
| 13 | 2.1.7 | Fix TABLE header in registeration page |  | 0.5d | 2011-08-31 A | 2011-08-31 A | 12 | 100% |  |  |  |  | JP | 4h | 4h |
| 14 | 2.1.8 | Fix TABLE in study summary page. |  | 0.5d | 2011-08-31 A | 2011-08-31 A | 13 | 100% |  |  |  |  | JP | 4h | 4h |
| 15 | 2.2 | **Ongoing maintenance and bug fixes** |  | 13d? | 2011-08-31 A | 2011-09-19 |  | 90% | 1.3d? | 0d |  |  |  |  |  |
| 16 | 2.2.1 | ADF platform issues |  | 2d | 2011-08-31 A | 2011-09-01 A |  | 100% |  |  |  | start no earlier than 2011-08-31 |  |  |  |
| 17 | 2.2.2 | ECAT Prep |  | 2d | 2011-09-02 A | 2011-09-06 A | 16 | 100% |  |  |  |  |  |  |  |
| 18 | 2.2.3 | prepare a point release for section 508 compliance. |  | 1d? | 2011-09-19 A | 2011-09-19 |  | 50% | 0.5d? | 0d |  | start no earlier than 2011-09-19 |  |  |  |
| 19 | 3 | QA |  | 10d | 2011-09-20 | 2011-10-03 | 18 |  |  | 182.75d | 0d |  |  |  |  |
| 20 | 4 | Stage/Prod Release |  | 7d | 2011-10-04 | 2011-10-12 | 19 |  |  | 182.75d |  |  |  |  |  |
| 21 | 5 | **CaIntegrator Version 1.4** |  | 122.75d? | 2011-08-01 A | 2012-01-19 |  | 7% | 113.89d? | 112d |  |  |  | 760h | 66h |
| 22 | 5.1 | Version 1.4 planning/priortization |  | 2d | 2011-08-01 A | 2011-08-02 A |  | 100% |  |  |  |  |  |  |  |
| 23 | 5.2 | **JIRA CAINT-1011 Tech Stack Upgrade** |  | 47.75d | 2011-08-03 A | 2011-10-10 | 22 | 36% | 30.62d | 0d |  |  |  | 184h | 66h |
| 24 | 5.2.1 | Planning |  | 2d | 2011-08-03 A | 2011-08-04 A |  | 100% |  |  |  |  | JP | 16h | 16h |
| 25 | 5.2.2 | CI to Jenkins |  | 2d | 2011-09-07 A | 2011-09-08 A | 24, 43, 44 | 100% |  |  |  |  | JP | 16h | 16h |
| 26 | 5.2.3 | ANT 1.8 |  | 3d | 2011-09-09 A | 2011-09-13 A | 25 | 100% |  |  |  |  | JP | 24h | 24h |
| 27 | 5.2.4 | Support for Version 1.3.1 |  | 2d | 2011-09-20 | 2011-09-21 | 18 |  |  | 0d |  |  | JP | 16h |  |
| 28 | 5.2.5 | JBOSS |  | 5d | 2011-09-14 A | 2011-09-27 | 27 | 25% | 3.75d | 0d |  |  | JP | 40h | 10h |
| 29 | 5.2.6 | Upgrade build for Anthill Pro 3 |  | 9d | 2011-09-27 | 2011-10-10 | 28 |  |  | 0d |  |  | JP | 72h |  |

| ID | WBS | Task | Duration | Start | Finish | Predecessors | Total slack | Free slack | Constraint | Resources | Work |
| --- | --- | --- | --- | --- | --- | --- | --- | --- | --- | --- | --- |
| 30 | 5.3 | **JIRA-CAINT-966 - Generic Platform Support** | 43d | 2011-10-10 | 2011-12-08 |  | 0d |  |  |  | 344h |
| 31 | 5.3.1 | Create new generic platform model by extending expression platform. | 8d | 2011-10-10 | 2011-10-20 | 29 | 0d |  |  | JP | 64h |
| 32 | 5.3.2 | Modify the generic platform loader to accept MAGE-TAB. | 5d | 2011-10-20 | 2011-10-27 | 31 | 0d |  |  | JP | 40h |
| 33 | 5.3.3 | Modify the study deployment process to load the new platform data from caArray. | 8d | 2011-10-27 | 2011-11-08 | 32 | 0d |  |  | JP | 64h |
| 34 | 5.3.4 | modify front-end analysis tools to show a new title according to platform type. | 3d | 2011-11-08 | 2011-11-11 | 33 | 0d |  |  | JP | 24h |
| 35 | 5.3.5 | Modify the Query interface to allow selection of a generic expression data type. | 14d | 2011-11-11 | 2011-12-01 | 34 | 0d |  |  | JP | 112h |
| 36 | 5.3.6 | Modify front-end for IGV and heatmap to display a selector for choosing a generic expression data type. | 5d | 2011-12-01 | 2011-12-08 | 35 | 0d |  |  | JP | 40h |
| 37 | 5.4 | **TRANSCEND Support** | 30d? | 2011-09-19 | 2011-10-28 |  | 160.75d | 0d |  |  | 232h |
| 38 | 5.4.1 | Gather contacts for TRANSCEND (contract?) | 1d? | 2011-09-19 | 2011-09-19 |  | 160.75d | 0d | start no earlier than 2011-09-19 |  |  |
| 39 | 5.4.2 | Refine Requirements | 10d | 2011-09-20 | 2011-10-03 | 38 | 160.75d | 0d |  | SJ | 80h |
| 40 | 5.4.3 | JIRA CAINT-998 -Version control (create shell study) | 14d | 2011-10-04 | 2011-10-21 | 39 | 160.75d | 0d |  | TBH | 112h |
| 41 | 5.4.4 | JIRA CAINT-998 Version control (Archive) | 5d | 2011-10-24 | 2011-10-28 | 40 | 160.75d |  |  | TBH | 40h |
| 42 | 5.5 | **Ongoing maintenance and bug fixes** | 4d | 2011-08-31 | 2011-09-06 |  | 208.75d |  |  |  |  |
| 43 | 5.5.1 | ADF platform issues | 2d | 2011-08-31 | 2011-09-01 |  | 208.75d | 0d | start no earlier than 2011-08-31 |  |  |
| 44 | 5.5.2 | ECAT Prep | 2d | 2011-09-02 | 2011-09-06 | 43 | 208.75d |  |  |  |  |
| 45 | 5.6 | QA | 20d | 2011-12-08 | 2012-01-05 | 30 | 0d |  |  |  |  |
| 46 | 5.7 | Documentation | 10d | 2011-10-31 | 2011-11-11 | 37 | 160.75d |  |  |  |  |
| 47 | 5.8 | Appscan/Stage/Prod release | 10d | 2012-01-05 | 2012-01-19 | 45 | 112d |  |  |  |  |
| 48 | 6 | **CaIntegrator Version 1.5** | 122d | 2012-01-05 | 2012-06-25 |  | 0d |  |  |  | 1280h |
| 49 | 6.1 | Version 1.5 planning/priortization | 2d | 2012-01-05 | 2012-01-09 | 45 | 0d |  |  |  |  |
| 50 | 6.2 | **TRANSCEND Support** | 80d | 2012-01-09 | 2012-04-30 |  | 0d |  |  |  | 1120h |
| 51 | 6.2.1 | JIRA CAINT-998 - TRANSCEND Permissions Support | 40d | 2012-01-09 | 2012-03-05 | 49 | 0d |  |  | JP | 320h |
| 52 | 6.2.2 | JIRA CAINT-998 Automatic Refresh | 40d | 2012-01-09 | 2012-03-05 | 49 | 60d | 0d |  | TBH | 320h |
| 53 | 6.2.3 | JIRA CAINT-998 Single Sign-on | 40d | 2012-03-05 | 2012-04-30 | 51 | 0d |  |  | TBH | 320h |
| 54 | 6.2.4 | JIRA CAINT-49 Integrate with private studies in NBIA | 20d | 2012-03-05 | 2012-04-02 | 52 | 60d |  |  | JP | 160h |
| 55 | 6.3 | JIRA CAINT-1041 - Support NCI Funded Studies Deployment | 20d | 2012-04-30 | 2012-05-28 | 53 | 0d |  |  | TBH | 160h |
| 56 | 6.4 | QA | 20d | 2012-05-28 | 2012-06-25 | 55 | 0d |  |  |  |  |
| 57 | 6.5 | Documentation | 10d | 2012-05-28 | 2012-06-11 | 55 | 0d |  |  |  |  |
| 58 | 6.6 | Appscan/Stage/Prod release | 10d | 2012-06-11 | 2012-06-25 | 57 | 0d |  |  |  |  |
